# 2013_09_05_VNP_C1RT_Master Project Plan_PA2

Schedule from MS Project, 2013-08-28 to 2014-08-12.
Ericsson

## Calendars

- Standard: Mon-Fri 08:00-12:00, 13:00-17:00; Sat-Sun off. Exceptions (off unless hours are given): 2014-01-20 to 2014-02-14 (Tet Vacation).

## Resources

| Resource |
| --- |
| Elcom |
| Comverse |
| Lãnh đạo VNP |
| TT Cước VNP |
| Tổ Nguồn VNP |
| Phòng KT VNP |
| Ban QLDA VNP |
| Comvse |
| OMC |

## Schedule

| ID | WBS | Task | Type | Duration | Start | Finish | Predecessors | Total slack | Free slack | Constraint | Resources | Work |
| --- | --- | --- | --- | --- | --- | --- | --- | --- | --- | --- | --- | --- |
| 1 | 1 | **VNP - Kế hoạch chi tiết triển khai Dự án C1-RT** |  | 230d | 2013-08-28 | 2014-08-12 |  | 0d |  |  |  | 10248h |
| 2 | 1.1 | **Kick-off triển khai dự án C1-RT** |  | 2d | 2013-08-28 | 2013-08-29 |  | 0d |  |  |  | 72h |
| 3 | 1.1.1 | Họp & thống nhất kick-off dự án giữa các bên liên quan |  | 1d | 2013-08-28 | 2013-08-28 |  | 0d |  | start no earlier than 2013-08-28 | Elcom; Comverse; Lãnh đạo VNP; TT Cước VNP; Tổ Nguồn VNP; Phòng KT VNP; Ban QLDA VNP | 56h |
| 4 | 1.1.2 | Comverse & Elcom thống nhất kế hoạch triển khai |  | 1d | 2013-08-29 | 2013-08-29 | 3 | 0d |  |  | Elcom; Comverse | 16h |
| 5 | 1.2 | **Chuẩn bị hạ tầng, nguồn điện, vị trí lắp đặt (Site Preparation & Readiness)** |  | 9d | 2013-09-12 | 2013-09-25 |  | 27d | 1d |  |  | 64h |
| 6 | 1.2.1 | Gửi các yêu cầu nguồn điện, số racks, số lượng cầu chì sang VNP (Site requirements Specification Available to VNP) | milestone | 0d | 2013-09-12 | 2013-09-12 | 2FS+2w | 27d | 0d |  | Comverse; Elcom |  |
| 7 | 1.2.2 | Khảo sát site, vị trí lắp đặt hệ thống (Site Survey) |  | 2d | 2013-09-13 | 2013-09-16 | 6 | 27d | 0d |  | Comverse; Elcom | 32h |
| 8 | 1.2.3 | Lên bản vẽ, tài liệu về sơ đồ vị trí lắp đặt hệ thống, nguồn điện... |  | 2d | 2013-09-17 | 2013-09-18 | 7 | 27d | 0d |  | Elcom; Comverse | 32h |
| 9 | 1.2.4 | Trình VNP duyệt về hạ tầng lắp đặt (vị trí, nguồn điện, công suất …) | milestone | 0d | 2013-09-18 | 2013-09-18 | 8 | 27d | 0d |  | Elcom; Comverse |  |
| 10 | 1.2.5 | Công văn đồng ý, phê duyệt vị trí lắp đặt từ VNP | milestone | 0d | 2013-09-25 | 2013-09-25 | 9FS+5d | 27d |  |  | Ban QLDA VNP; Lãnh đạo VNP; Phòng KT VNP; Tổ Nguồn VNP; TT Cước VNP |  |
| 11 | 1.3 | **Chuyển hàng (shipment), lắp đặt phần cứng HW** |  | 22d | 2013-10-10 | 2013-11-11 |  | 145d | 0d |  |  | 200h |
| 12 | 1.3.1 | **Chuẩn bị phần cứng và chuyển hàng (HW Preparation and Shipment)** |  | 0d | 2013-10-10 | 2013-10-10 |  | 145d | 0d |  |  |  |
| 13 | 1.3.1.1 | Phần cứng, phần mềm & license sẵn sàng cho việc vận chuyển (HW, SW, Licenses are ready for shipment) | milestone | 0d | 2013-10-10 | 2013-10-10 | 2FS+6w | 145d |  |  | Comverse |  |
| 14 | 1.3.1.2 | 3PP's HW, SW, Licenses are ready for shipment | milestone | 0d | 2013-10-10 | 2013-10-10 | 2FS+6w | 145d |  |  | Comverse; Elcom |  |
| 15 | 1.3.1.3 | IVR HW, SW, Licenses are ready for shipment | milestone | 0d | 2013-10-10 | 2013-10-10 | 2FS+6w | 145d |  |  | Comverse; Elcom |  |
| 16 | 1.3.2 | **Chuẩn bị chuyển hàng (Pre-Shipment)** |  | 2d | 2013-10-14 | 2013-10-16 |  | 145d | 0d |  |  | 16h |
| 17 | 1.3.2.1 | Tài liệu & danh sách hàng hóa sẵn sàng (Draft Shipping Documents Available for Review) | milestone | 0d | 2013-10-14 | 2013-10-14 | 12FS+2d | 145d | 0d |  | Comverse |  |
| 18 | 1.3.2.2 | Kiểm tra danh sách hàng sẽ được gửi (Review Draft Shipping Documents) |  | 1d | 2013-10-15 | 2013-10-15 | 17 | 145d | 0d |  | Elcom | 8h |
| 19 | 1.3.2.3 | Duyệt tài liệu, danh sách hàng sẽ được gửi (Shipping Documents Finalized) |  | 1d | 2013-10-16 | 2013-10-16 | 18 | 145d |  |  | Elcom | 8h |
| 20 | 1.3.3 | **Chuyển hàng (Shipment)** |  | 5d | 2013-10-17 | 2013-10-23 |  | 145d | 0d |  |  | 40h |
| 21 | 1.3.3.1 | Comverse gửi toàn bộ hàng hóa đến VNP (All HW, SW, Licenses including HW for 3PP components shipped) |  | 5d | 2013-10-17 | 2013-10-23 | 16 | 145d |  |  | Comverse | 40h |
| 22 | 1.3.4 | **Chuyển hàng - thủ tục thông quan (Shipment - Customs Clearance)** |  | 10d | 2013-10-24 | 2013-11-06 |  | 145d | 0d |  |  | 80h |
| 23 | 1.3.4.1 | Thủ tục thông quan tại cảng Việt Nam (Customs Duties Paid/Customs Clearance) |  | 2w | 2013-10-24 | 2013-11-06 | 20 | 145d |  |  | Elcom | 80h |
| 24 | 1.3.5 | **Vận chuyển HW đến site VNP và lắp đặt HW (HW Delivery and Physical Inspection)** |  | 3d | 2013-11-07 | 2013-11-11 |  | 145d |  |  |  | 64h |
| 25 | 1.3.5.1 | Chuyển hàng đến site VNP 57A HTK (Site Delivery Begins) |  | 1d | 2013-11-07 | 2013-11-07 | 22 | 145d | 0d |  | Elcom; Comverse | 16h |
| 26 | 1.3.5.2 | Hàng hóa đến site 57A HTK (HW Onsite) |  | 1d | 2013-11-08 | 2013-11-08 | 25 | 145d | 0d |  | Elcom; Comverse | 16h |
| 27 | 1.3.5.3 | Kiểm tra, kiểm định HW tại site (HW Inspection/Delivery Verification) |  | 1d | 2013-11-11 | 2013-11-11 | 26 | 145d |  |  | Elcom; Comverse; Ban QLDA VNP; TT Cước VNP | 32h |

| ID | WBS | Task | Type | Duration | Start | Finish | Predecessors | Total slack | Free slack | Resources | Work |
| --- | --- | --- | --- | --- | --- | --- | --- | --- | --- | --- | --- |
| 28 | 1.4 | **IPA - Phân tích hệ thống hiện tại & yêu cầu chi tiết cho hệ thống mới (Requirements Analysis & Detailed Solution Design)** |  | 47d | 2013-09-09 | 2013-11-12 |  | 0d |  |  | 928h |
| 29 | 1.4.1 | **Khảo sát, thu nhập thông tin về hiện trạng, nghiệp vụ trả sau tại VNP (IPA Planning & Requirements Gathering)** |  | 25d | 2013-09-09 | 2013-10-11 |  | 0d |  |  | 520h |
| 30 | 1.4.1.1 | Làm việc với Vinaphone để khảo sát, trả lời câu hỏi questionaires, chuẩn bị cho nội dung các tài liệu… |  | 5d | 2013-09-09 | 2013-09-13 | 2FS+6d | 0d |  | TT Cước VNP; Comverse; Elcom | 120h |
| 31 | 1.4.1.2 | Thu thập thông tin về các gói cước, nghiệp vụ trả sau tại VNP |  | 10d | 2013-09-16 | 2013-09-27 | 30 | 0d |  | Comverse; Elcom; TT Cước VNP | 240h |
| 32 | 1.4.1.3 | Tổng kết, báo cáo về khảo sát, thống kê hiện trạng hệ thống trả sau |  | 10d | 2013-09-30 | 2013-10-11 | 31 | 0d |  | Comverse; Elcom | 160h |
| 33 | 1.4.2 | **Hội thảo phân tích kỹ thuật với VNP (IPA workshop with VNP)** |  | 7d | 2013-10-16 | 2013-10-24 |  | 0d |  |  | 248h |
| 34 | 1.4.2.1 | Workshop trình bày về hệ thống C1-RT, kiến trúc tổng thể |  | 2d | 2013-10-16 | 2013-10-17 | 29FS+2d | 0d |  | Comverse; Elcom; TT Cước VNP | 48h |
| 35 | 1.4.2.2 | Workshop giải trình & chia sẻ, phân tích về những thông tin và kết quả khảo sát (clarification & discussion based on data & information collected) |  | 5d | 2013-10-18 | 2013-10-24 | 34 | 0d |  | Comverse; Elcom; Ban QLDA VNP; Phòng KT VNP; TT Cước VNP | 200h |
| 36 | 1.4.3 | **Xây dựng giái pháp chi tiết hệ thống Comverse/Elcom C1-RT** |  | 2d | 2013-10-25 | 2013-10-28 |  | 0d |  |  | 96h |
| 37 | 1.4.3.1 | Xây dựng kiến trúc tổng thể hệ thống C1-RT |  | 2d | 2013-10-25 | 2013-10-28 | 33 | 0d |  | Comverse; Elcom | 32h |
| 38 | 1.4.3.2 | Xây dựng kiến trúc chi tiết hệ thống C1-RT và các hệ thống phụ trợ |  | 2d | 2013-10-25 | 2013-10-28 | 33 | 0d |  | Comverse; Elcom | 32h |
| 39 | 1.4.3.3 | Xây dựng, lập chi tiết các yêu cầu (requirements specification) cho các modules thuộc hệ thống C1-RT |  | 2d | 2013-10-25 | 2013-10-28 | 33 | 0d |  | Comverse; Elcom | 32h |
| 40 | 1.4.4 | **IPA Documentation for Sign-off** |  | 11d | 2013-10-29 | 2013-11-12 |  | 0d |  |  | 64h |
| 41 | 1.4.4.1 | All detailed solution documents are prepared & documented |  | 1d | 2013-10-29 | 2013-10-29 | 36 | 0d |  | Ban QLDA VNP; Elcom; TT Cước VNP | 24h |
| 42 | 1.4.4.2 | Internal review of IPA documents |  | 5d | 2013-10-30 | 2013-11-05 | 41 | 0d |  | Elcom | 40h |
| 43 | 1.4.4.3 | **VNP phê duyệt tài liệu thiết kế chi tiết từ Elcom/Comverse** |  | 5d | 2013-11-05 | 2013-11-12 |  | 0d |  |  |  |
| 44 | 1.4.4.3.1 | Biên bản tổng hợp các yêu cầu thiết kế cụ thể từ VNP đối với hệ thống C1-RT | milestone | 0d | 2013-11-05 | 2013-11-05 | 42 | 0d |  | Comverse; Elcom |  |
| 45 | 1.4.4.3.2 | Thống nhất và phê duyệt yêu cầu chi tiết cho hệ thống C1-RT | milestone | 0d | 2013-11-12 | 2013-11-12 | 44FS+5d | 0d |  | Ban QLDA VNP; Lãnh đạo VNP; Phòng KT VNP; TT Cước VNP |  |
| 46 | 1.5 | **Chuẩn bị tài liệu nghiệm thu cho hệ thống C1-RT (Customer ATP Documents Planning)** |  | 40d | 2013-11-13 | 2014-01-07 |  | 68d | 48d |  | 960h |
| 47 | 1.5.1 | Tài liệu nghiệm thu Internal ATP của Comverse |  | 10d | 2013-11-13 | 2013-11-26 | 28 | 68d | 0d | Comverse | 80h |
| 48 | 1.5.2 | **Tài liệu nghiệm thu hệ thống C1-RT** |  | 20d | 2013-11-27 | 2013-12-24 |  | 68d | 0d |  | 800h |
| 49 | 1.5.2.1 | Tài liệu nghiệm thu hệ thống C1-RT end-2-end |  | 20d | 2013-11-27 | 2013-12-24 | 47 | 68d |  | Comverse | 160h |
| 50 | 1.5.2.2 | Tài liệu nghiệm thu hệ thống C1-RT load test |  | 20d | 2013-11-27 | 2013-12-24 | 47 | 68d |  | Comverse | 160h |
| 51 | 1.5.2.3 | Tài liệu nghiệm thu hệ thống C1-RT migration verification |  | 20d | 2013-11-27 | 2013-12-24 | 47 | 68d |  | Comverse | 160h |
| 52 | 1.5.2.4 | Tài liệu nghiệm thu hệ thống C1-RT kết nối, tích hợp với các hệ thống khác |  | 20d | 2013-11-27 | 2013-12-24 | 47 | 68d |  | Comverse | 160h |
| 53 | 1.5.2.5 | Tài liệu nghiệm thu hệ thống C1-RT các hệ thống phụ trợ, mediation |  | 20d | 2013-11-27 | 2013-12-24 | 47 | 68d |  | Elcom | 160h |
| 54 | 1.5.3 | Tài liệu nghiệm thu tổng hợp trình VNP |  | 10d | 2013-12-25 | 2014-01-07 | 48 | 68d |  | Elcom | 80h |

| ID | WBS | Task | Duration | Start | Finish | Predecessors | Total slack | Free slack | Resources | Work |
| --- | --- | --- | --- | --- | --- | --- | --- | --- | --- | --- |
| 55 | 1.6 | **Xây dựng hệ thống Testlab cho C1-RT** | 121d | 2013-08-30 | 2014-03-14 |  | 20d | 0d |  | 928h |
| 56 | 1.6.1 | **Chuẩn bị hạ tầng, phần cứng cho test-lab** | 20d | 2013-08-30 | 2013-09-26 |  | 25d | 0d |  | 176h |
| 57 | 1.6.1.1 | Chuẩn bị HW, cấu hình phần cứng cho test-lab | 20d | 2013-08-30 | 2013-09-26 | 2 | 25d |  | Elcom | 160h |
| 58 | 1.6.1.2 | Phần mềm, software, các yêu cầu cho việc cài đặt Test-lab | 2d | 2013-08-30 | 2013-09-02 | 2 | 43d |  | Comverse | 16h |
| 59 | 1.6.2 | **Cài đặt phần mềm, cấu hình Hệ thống C1-RT Testlab (C1-RT Testlab Software Configuration)** | 101d | 2013-09-27 | 2014-03-14 |  | 20d |  |  | 752h |
| 60 | 1.6.2.1 | **Thông tin, kế hoạch mạng lưới (CORE, IP) - Network Plan** | 2d | 2013-09-27 | 2013-09-30 |  | 25d | 0d |  | 40h |
| 61 | 1.6.2.1.1 | Cấu hình mạng IP (Network Plan - Architecture, IP Configuration details) | 2d | 2013-09-27 | 2013-09-30 | 56 | 25d |  | Comverse | 16h |
| 62 | 1.6.2.1.2 | Thông tin các hệ thống giả lập cho các phần tử mạng (STPs, MSCs, HLRs, GSNs, VAS elements, CRBT, MMSC, SMSC) | 1d | 2013-09-27 | 2013-09-27 | 56, 5 | 26d |  | Comverse; Elcom; TT Cước VNP | 24h |
| 63 | 1.6.2.2 | **Cấu hình hệ thống C1-RT (System configuration)** | 36d | 2013-10-01 | 2013-11-19 |  | 0d |  |  | 152h |
| 64 | 1.6.2.2.1 | Thiết lập cấu hình phần cứng, phần mềm hệ thống | 1d | 2013-10-01 | 2013-10-01 | 60 | 25d | 0d | Comverse; Elcom | 16h |
| 65 | 1.6.2.2.2 | Thiết lập cấu hình phần mềm C1-RT | 5d | 2013-10-02 | 2013-10-08 | 64 | 25d |  | Comverse | 40h |
| 66 | 1.6.2.2.3 | Cài đặt, cấu hình các gói cước, tariff, khuyến mại như hệ thống thật | 5d | 2013-11-13 | 2013-11-19 | 64, 65, 28 | 0d |  | Comverse; Elcom | 80h |
| 67 | 1.6.2.2.4 | Cài đặt thuê bao giả lập, cơ sở dữ liệu thuê bao phục vụ việc phát triển các phần mềm hỗ trợ nghiệp vụ | 1d | 2013-11-13 | 2013-11-13 | 64, 65, 28 | 4d |  | Comverse; Elcom | 16h |
| 68 | 1.6.2.3 | **Tích hợp hệ thống C1-RT với các thiết bị giả lập, các hệ thống bên ngoài qua SAPI** | 3d | 2013-11-20 | 2013-11-22 |  | 0d |  |  | 80h |
| 69 | 1.6.2.3.1 | Tích hợp hệ thống C1-RT với các phần mềm giả lập cuộc gọi, traffic | 2d | 2013-11-20 | 2013-11-21 | 63 | 1d |  | Comverse; Elcom | 32h |
| 70 | 1.6.2.3.2 | Tích hợp hệ thống C1-RT với các hệ thống bên ngoài qua SAPI interface | 3d | 2013-11-20 | 2013-11-22 | 63 | 0d |  | Comverse; Elcom | 48h |
| 71 | 1.6.2.4 | **Vận hành, phát triển phần mềm & ứng dụng hỗ trợ** | 60d | 2013-11-25 | 2014-03-14 | 70 | 20d |  |  | 480h |
| 72 | 1.6.2.4.1 | Hỗ trợ VNP, Elcom phát triển các phần mềm, ứng dụng hỗ trợ qua interface SAPI | 3mo | 2013-11-25 | 2014-03-14 | 68 | 20d |  | Comverse | 480h |
| 73 | 1.7 | **Phát triển phần mềm, các hệ thống mediation (Elcom)** | 60d | 2013-11-25 | 2014-03-14 |  | 0d |  |  | 480h |
| 74 | 1.7.1 | Phát triển các ứng dụng, mediation phục vụ cho việc tích hợp | 3mo | 2013-11-25 | 2014-03-14 | 68 | 0d |  | Elcom | 480h |
| 75 | 1.8 | **Lập kế hoạch tích hợp & chuyển thuê bao trả sau vào hệ thống (Subscribers migration planning)** | 40d | 2013-11-25 | 2014-01-17 | 68 | 80d |  |  | 520h |
| 76 | 1.8.1 | Phân tích dữ liệu, cấu trúc thuê bao trả sau hiện tại | 15d | 2013-11-25 | 2013-12-13 |  | 80d | 0d | Elcom | 120h |
| 77 | 1.8.2 | Chuẩn bị dữ liệu, phát triển chương trình chuyển đổi thuê bao | 15d | 2013-12-16 | 2014-01-03 | 76 | 80d | 0d | Elcom; Comverse | 240h |
| 78 | 1.8.3 | Thử nghiệm việc chuyển đổi thuê bao trả sau trên hệ thống test C1-RT | 10d | 2014-01-06 | 2014-01-17 | 77 | 80d |  | Elcom; Comverse | 160h |

| ID | WBS | Task | Type | Duration | Start | Finish | Predecessors | Total slack | Free slack | Resources | Work |
| --- | --- | --- | --- | --- | --- | --- | --- | --- | --- | --- | --- |
| 79 | 1.9 | **Đào tạo nghiệp vụ - (Training)** |  | 10d | 2014-03-24 | 2014-04-04 |  | 67d |  |  | 480h |
| 80 | 1.9.1 | Đạo tạo, hướng dẫn sử dụng hệ thống C1-RT & kiến trúc tổng thể |  | 5d | 2014-03-24 | 2014-03-28 | 28FS+5d, 55FS+5d | 67d | 0d | Elcom; Comverse; Ban QLDA VNP; OMC; Phòng KT VNP; TT Cước VNP | 240h |
| 81 | 1.9.2 | Dào tạo, hướng dẫn sử dụng các hệ thống, phần mềm, sản phẩm thuộc C1-RT (PCAT, Security…) |  | 5d | 2014-03-31 | 2014-04-04 | 80 | 67d |  | Elcom; Comverse; Ban QLDA VNP; OMC; Phòng KT VNP; TT Cước VNP | 240h |
| 82 | 1.10 | **Lắp đặt phần cứng (HW installation and deployment at site)** |  | 6d | 2013-11-11 | 2013-11-19 |  | 145d |  |  | 120h |
| 83 | 1.10.1 | **Cơ sở hạ tầng sẵn sàng cho việc lắp đặt (Data Center readiness for HW installation)** |  | 0d | 2013-11-11 | 2013-11-11 |  | 145d | 0d |  |  |
| 84 | 1.10.1.1 | Vị trí lắp đặt thiết bị tại VNP đã được phê duyệt & sẵn sàng | milestone | 0d | 2013-11-11 | 2013-11-11 | 5, 11 | 145d |  | Ban QLDA VNP; Tổ Nguồn VNP; TT Cước VNP |  |
| 85 | 1.10.1.2 | Nguồn điện DC tại site sẵn sàng cho việc kết nối với hệ thống (tổng công suất 500A -48V side A & B) | milestone | 0d | 2013-11-11 | 2013-11-11 | 5, 11 | 145d |  | Ban QLDA VNP; Tổ Nguồn VNP; TT Cước VNP |  |
| 86 | 1.10.2 | **Lắp đặt phần cứng tại site VNP (HW MI Installation at site VNP)** |  | 6d | 2013-11-12 | 2013-11-19 |  | 145d |  |  | 120h |
| 87 | 1.10.2.1 | Lắp đặt phần cứng Comverse & Elcom tại site VNP 57A HTK |  | 5d | 2013-11-12 | 2013-11-18 | 83 | 145d | 0d | Comverse; Elcom | 80h |
| 88 | 1.10.2.2 | Kết nối nguồn điện - khởi động hệ thống (System Power-on) |  | 1d | 2013-11-19 | 2013-11-19 | 87 | 145d |  | Ban QLDA VNP; Tổ Nguồn VNP; Comverse; Elcom; TT Cước VNP | 40h |
| 89 | 1.11 | **Triển khai cài đặt phần mềm, ứng dụng của C1-RT** |  | 141d | 2013-08-30 | 2014-04-11 |  | 62d |  |  | 1800h |
| 90 | 1.11.1 | **Phát triển phần mềm C1-RT nếu có (Software, Application Development)** |  | 15d | 2013-11-13 | 2013-12-03 |  | 135d |  |  | 120h |
| 91 | 1.11.1.1 | Comverse phát triển các gói ứng dụng, giao thức để phù hợp với yêu cầu VNP (nếu có) |  | 15d | 2013-11-13 | 2013-12-03 | 28 | 135d |  | Comverse | 120h |
| 92 | 1.11.2 | **Cài đặt, cấu hình mạng IP cho hệ thống C1-RT (IP Network Configuration)** |  | 53d | 2013-08-30 | 2013-11-12 |  | 33d | 0d |  | 40h |
| 93 | 1.11.2.1 | Thông tin mạng IP, địa chỉ IP cho hệ thống C1-RT | milestone | 0d | 2013-11-12 | 2013-11-12 | 5, 28 | 33d |  | Ban QLDA VNP; TT Cước VNP |  |
| 94 | 1.11.2.2 | Cài đặt, cấu hình switches, routers, loadbalancer |  | 5d | 2013-08-30 | 2013-09-05 |  | 81d |  | Comverse | 40h |
| 95 | 1.11.3 | **Cài đặt, cấu hình phần mềm cho các nodes trong hệ thống C1-RT (Software Installation)** |  | 25d | 2013-11-13 | 2013-12-17 |  | 33d | 0d |  | 200h |
| 96 | 1.11.3.1 | Cài đặt, cấu hình DGU, DSLU, SGU, SLU, TRM, SAPI… |  | 5d | 2013-11-13 | 2013-11-19 | 92 | 33d | 0d | Comverse | 40h |
| 97 | 1.11.3.2 | Cài đặt, cấu hình SDP |  | 5d | 2013-11-20 | 2013-11-26 | 96 | 33d | 0d | Comverse | 40h |
| 98 | 1.11.3.3 | Cài đặt configurations cho các ứng dụng - PCAT, Security, Diameter... |  | 15d | 2013-11-27 | 2013-12-17 | 97 | 33d |  | Comverse | 120h |
| 99 | 1.11.4 | **Tích hợp hệ thống với các mạng khác của VNP (Integration)** |  | 63d | 2013-12-17 | 2014-04-11 |  | 0d |  |  | 1440h |
| 100 | 1.11.4.1 | Mạng lõi, VAS, các hệ thống IT, BCCS NEO, các ứng dụng Billing sẵn sàng cho việc tích hợp | milestone | 0d | 2013-12-17 | 2013-12-17 | 28, 5, 95 | 33d | 0d | Ban QLDA VNP; OMC; Phòng KT VNP; TT Cước VNP |  |
| 101 | 1.11.4.2 | Tích hợp với mạng lõi CORE của VNP (MSCs, HLRs, STPs, iGGSNs...) |  | 5d | 2013-12-18 | 2013-12-24 | 100 | 33d | 0d | Comverse; Ban QLDA VNP; Elcom; TT Cước VNP; OMC; Phòng KT VNP | 240h |
| 102 | 1.11.4.3 | Tích hợp với mạng VAS, CPs, Charging Gw của VNP |  | 5d | 2013-12-25 | 2013-12-31 | 101 | 33d |  | Comverse; OMC; Elcom; Ban QLDA VNP; Phòng KT VNP; TT Cước VNP | 240h |
| 103 | 1.11.4.4 | Tích hợp với các hệ thống IT, Mediation, ứng dụng khác Billings |  | 5d | 2014-03-17 | 2014-03-21 | 102, 73 | 0d |  | Comverse; OMC; Elcom; Ban QLDA VNP; Phòng KT VNP; TT Cước VNP | 240h |
| 104 | 1.11.4.5 | Tích hợp với hệ thống quản lý & chăm sóc khách hàng NEO |  | 5d | 2014-03-24 | 2014-03-28 | 103 | 0d |  | Comverse; OMC; Elcom; Ban QLDA VNP; Phòng KT VNP; TT Cước VNP | 240h |
| 105 | 1.11.4.6 | Tích hợp với các hệ thống khác (nếu có) |  | 10d | 2014-03-31 | 2014-04-11 | 104 | 0d |  | Comverse; OMC; Elcom; Ban QLDA VNP; Phòng KT VNP; TT Cước VNP | 480h |

| ID | WBS | Task | Type | Duration | Start | Finish | Predecessors | Total slack | Resources | Work |
| --- | --- | --- | --- | --- | --- | --- | --- | --- | --- | --- |
| 106 | 1.12 | **Kiểm tra, nghiệm thu thử việc hoạt động, tương tác giữa C1-RT và các hệ thống khác của VNP (Inter-Operability Testing)** |  | 20d | 2014-04-11 | 2014-05-09 |  | 0d |  | 704h |
| 107 | 1.12.1 | **Lên kế hoạch nghiệm thu thử nghiệm - IOT Test Planning** |  | 0d | 2014-04-11 | 2014-04-11 |  | 20d |  |  |
| 108 | 1.12.1.1 | Biên bản bài test thử nghiệm đã có (IOT Test plan made available) | milestone | 0d | 2014-04-11 | 2014-04-11 | 46, 99 | 20d | Comverse |  |
| 109 | 1.12.2 | **Phối hợp với các phòng ban trong quá trình test thử nghiệm IOT** |  | 2d | 2014-04-11 | 2014-04-15 |  | 18d |  | 64h |
| 110 | 1.12.2.1 | Mạng lõi, VAS, các hệ thống IT, BCCS NEO, các ứng dụng Billing sẵn sàng cho việc test thử nghiệm IOT | milestone | 0d | 2014-04-11 | 2014-04-11 | 5, 55, 99 | 20d | Ban QLDA VNP; OMC; Phòng KT VNP; TT Cước VNP |  |
| 111 | 1.12.2.2 | Các phòng ban liên quan tại VNP đã được thông báo và sẵn sàng phối hợp |  | 2d | 2014-04-14 | 2014-04-15 | 5, 55, 99 | 18d | Ban QLDA VNP; OMC; Phòng KT VNP; TT Cước VNP | 64h |
| 112 | 1.12.3 | **Thiết bị sẵn sàng cho việc test thử nghiệm (Equipment Available for IOT)** |  | 0d | 2014-04-11 | 2014-04-11 |  | 0d |  |  |
| 113 | 1.12.3.1 | Điện thoại, SIM, Thẻ cào… (Handsets/SIM cards provisioned and available) | milestone | 0d | 2014-04-11 | 2014-04-11 | 5, 55, 99 | 0d | Comverse; Elcom; Tổ Nguồn VNP |  |
| 114 | 1.12.3.2 | Mở kết nối đến hệ thống từ xa qua Secure Client (Remote Access Available for Use) | milestone | 0d | 2014-04-11 | 2014-04-11 | 5, 55, 99 | 0d | Comverse; Elcom; OMC; TT Cước VNP |  |
| 115 | 1.12.4 | **Thực hiện việc test thử nghiệm IOT (IOT Test Execution)** |  | 20d | 2014-04-14 | 2014-05-09 |  | 0d |  | 640h |
| 116 | 1.12.4.1 | Thực hiện IOT theo kế hoạch (IOT Test Execution) |  | 15d | 2014-04-14 | 2014-05-02 | 112 | 0d | Comverse; Elcom; Ban QLDA VNP; TT Cước VNP | 480h |
| 117 | 1.12.4.2 | Tổng kết kết quả IOT, chỉnh sửa & khắc phục (IOT Test Readout) |  | 5d | 2014-05-05 | 2014-05-09 | 116 | 0d | Comverse; Elcom; Ban QLDA VNP; TT Cước VNP | 160h |
| 118 | 1.13 | **Provisional Acceptance (PAC) Test Planning - Launch Phase** |  | 20d | 2014-05-09 | 2014-06-06 |  | 0d |  | 880h |
| 119 | 1.13.1 | **Provisional Acceptance Test Planning** |  | 20d | 2014-05-09 | 2014-06-06 | 106 | 0d |  | 880h |
| 120 | 1.13.1.1 | Chuẩn bị tài liệu nghiệm thu PAC | milestone | 0d | 2014-05-09 | 2014-05-09 | 106, 46 | 0d | Comverse; Elcom |  |
| 121 | 1.13.1.2 | Provisional Acceptance Test Plan Review and Feedback |  | 10d | 2014-05-12 | 2014-05-23 | 120 | 0d | Ban QLDA VNP; Lãnh đạo VNP; OMC; Phòng KT VNP; TT Cước VNP | 400h |
| 122 | 1.13.1.3 | Provisional Acceptance Test Plan Approved | milestone | 0d | 2014-05-23 | 2014-05-23 | 121 | 0d | Ban QLDA VNP; Lãnh đạo VNP; OMC; Phòng KT VNP; TT Cước VNP |  |
| 123 | 1.13.1.4 | **Các hệ thống mạng lõi, VAS, các hệ thống hiện tại sẵn sàng cho PAC (VNP Network Elements - CORE, VAS... and IT Elements ready for PAC)** |  | 0d | 2014-05-23 | 2014-05-23 |  | 0d |  |  |
| 124 | 1.13.1.4.1 | All HLRs ready | milestone | 0d | 2014-05-23 | 2014-05-23 | 122 | 0d | Ban QLDA VNP; OMC; Phòng KT VNP; TT Cước VNP |  |
| 125 | 1.13.1.4.2 | All MSC, STP, GGSN, SGSN… ready | milestone | 0d | 2014-05-23 | 2014-05-23 | 122 | 0d | Ban QLDA VNP; OMC; Phòng KT VNP; TT Cước VNP |  |
| 126 | 1.13.1.4.3 | All VAS & VAS's related application servers (WAP, SMSC, MMSC, RBT...) ready | milestone | 0d | 2014-05-23 | 2014-05-23 | 122 | 0d | Ban QLDA VNP; OMC; Phòng KT VNP; TT Cước VNP |  |
| 127 | 1.13.1.4.4 | All VNP - IT applications & interfaces Ready for PAC Testing | milestone | 0d | 2014-05-23 | 2014-05-23 | 122 | 0d | Ban QLDA VNP; OMC; Phòng KT VNP; TT Cước VNP; Elcom |  |
| 128 | 1.13.1.5 | **Test Equipment Available for Integ Testing** |  | 0d | 2014-05-23 | 2014-05-23 |  | 0d |  |  |
| 129 | 1.13.1.5.1 | Handsets / SIM Cards provisioned and available | milestone | 0d | 2014-05-23 | 2014-05-23 | 122 | 0d | Comverse; Elcom |  |

| ID | WBS | Task | Type | Duration | Start | Finish | Predecessors | Total slack | Free slack | Resources | Work |
| --- | --- | --- | --- | --- | --- | --- | --- | --- | --- | --- | --- |
| 130 | 1.13.1.6 | **PAC Test Execution and Readout** |  | 10d | 2014-05-23 | 2014-06-06 |  | 0d |  |  | 480h |
| 131 | 1.13.1.6.1 | Start of PAC Test Execution | milestone | 0d | 2014-05-23 | 2014-05-23 | 122, 123, 128 | 0d |  | Comverse; Elcom; Ban QLDA VNP; OMC; Phòng KT VNP; TT Cước VNP |  |
| 132 | 1.13.1.6.2 | PAC Test Execution |  | 10d | 2014-05-26 | 2014-06-06 | 131 | 0d |  | Comverse; Elcom; Ban QLDA VNP; OMC; Phòng KT VNP; TT Cước VNP | 480h |
| 133 | 1.13.1.6.3 | PAC Test Execution Readout | milestone | 0d | 2014-06-06 | 2014-06-06 | 132 | 0d |  | Comverse; Elcom; Ban QLDA VNP; OMC; Phòng KT VNP; TT Cước VNP |  |
| 134 | 1.13.1.6.4 | PAC Complete - Certificate Issued | milestone | 0d | 2014-06-06 | 2014-06-06 | 133 | 0d |  | Comverse; Elcom; Ban QLDA VNP; OMC; Phòng KT VNP; TT Cước VNP |  |
| 135 | 1.14 | **Chuyển dịch vụ, cut-over thuê bao trả sau sang hệ thống C1-RT (Migration & Cut-over)** |  | 22d | 2014-06-09 | 2014-07-08 | 75 | 0d |  |  | 1184h |
| 136 | 1.14.1 | Migration Preparation & Planning |  | 15d | 2014-06-09 | 2014-06-27 | 118 | 7d |  | Elcom; Comverse; Ban QLDA VNP; TT Cước VNP | 480h |
| 137 | 1.14.2 | Chuyển thử nghiệm thuê bao trả sau vào hệ thống C1-RT |  | 2d | 2014-06-09 | 2014-06-10 | 134 | 0d |  | Comverse; Elcom; Phòng KT VNP; TT Cước VNP | 64h |
| 138 | 1.14.3 | Vận hành, kiểm tra tính chính xác của các thuê bao thử nghiệm |  | 15d | 2014-06-11 | 2014-07-01 | 137 | 0d |  | Comverse; Elcom; Phòng KT VNP; TT Cước VNP | 480h |
| 139 | 1.14.4 | Chuyển chính thức, toàn bộ thuê bao trả sau vào hệ thống C1-RT |  | 5d | 2014-07-02 | 2014-07-08 | 138 | 0d |  | Comverse; Elcom; Phòng KT VNP; TT Cước VNP | 160h |
| 140 | 1.15 | **Vận hành hệ thống C1-RT & nghiệm thu dự án FAC - (Stability Period & Final Acceptance - FAC)** |  | 25d | 2014-07-08 | 2014-08-12 | 79, 2, 5, 11, 28, 46, 55, 82, 89, 106, 118, 135 | 0d |  |  | 928h |
| 141 | 1.15.1 | Bắt đầu chạy chính thức & theo dõi thuê bao trả sau trên hệ thống C1-RT (Stability Period - Start) | milestone | 0d | 2014-07-08 | 2014-07-08 | 135 | 0d |  | Comverse; Elcom; Phòng KT VNP; TT Cước VNP |  |
| 142 | 1.15.2 | Kết thúc quá trình theo dõi thuê bao trả sau trên hệ thống C1-RT (Stability Period - Closed) |  | 25d | 2014-07-09 | 2014-08-12 | 141 | 0d |  | Comverse; Elcom; Phòng KT VNP; TT Cước VNP | 800h |
| 143 | 1.15.3 | Tổng hợp, kiểm tra quá trình vận hành hệ thống C1-RT |  | 2d | 2014-07-09 | 2014-07-10 | 141 | 21d | 0d | Comverse; Elcom; Phòng KT VNP; TT Cước VNP | 64h |
| 144 | 1.15.4 | Kết thúc dự án - FAC (Final Acceptance - Certificate Issued) |  | 2d | 2014-07-11 | 2014-07-14 | 143 | 21d |  | Comverse; Elcom; Phòng KT VNP; TT Cước VNP | 64h |
