# PRJ-0-024-872 - VNP C1RT - Project Implementation Plan (v3)

Schedule from MS Project, 2013-07-15 to 2014-07-10, status date 2013-09-15.
Comverse

## Calendars

- Vietnam2013-2014: Mon-Fri 08:00-12:00, 13:00-17:00; Sat-Sun off. Exceptions (off unless hours are given): 2013-09-02 (Independence day), 2014-01-01 (New Year), 2014-01-25 to 2014-02-09 (Lunar New Year), 2014-04-09 (Hung King day), 2014-04-30 to 2014-05-02 (Victory day).

## Schedule

| ID | WBS | Task | Type | Duration | Start | Finish | Predecessors | Total slack | Free slack | Constraint |
| --- | --- | --- | --- | --- | --- | --- | --- | --- | --- | --- |
| 1 | 1 | **VNP C1RT - 1 Phase** |  | 243d | 2013-07-15 | 2014-07-10 |  | 0d |  | start no earlier than 2013-07-15 |
| 2 | 1.1 | **Project Initiation** |  | 243d | 2013-07-15 | 2014-07-10 |  | 0d |  |  |
| 3 | 1.1.1 | Trigger (PO) | milestone | 0d | 2013-07-15 | 2013-07-15 |  | 16d |  |  |
| 4 | 1.1.2 | Internal KOM | milestone | 0d | 2013-08-05 | 2013-08-05 | 3 | -28d | 0d | must finish on 2013-08-05 |
| 5 | 1.1.3 | External KOM (CMV-ELCOM) | milestone | 0d | 2013-08-14 | 2013-08-14 | 4 | 0d |  | must finish on 2013-08-14 |
| 6 | 1.1.4 | External KOM (CMV/ECLOM-VNP) | milestone | 0d | 2013-08-28 | 2013-08-28 | 5 | 0d |  | must finish on 2013-08-28 |
| 7 | 1.1.5 | **Production** |  | 35d | 2013-08-15 | 2013-10-03 |  | 0d |  |  |
| 8 | 1.1.5.1 | **System plan** |  | 19d | 2013-08-15 | 2013-09-11 |  | 1d |  |  |
| 9 | 1.1.5.1.1 | Site Survey Preparation |  | 3d | 2013-08-15 | 2013-08-19 | 5 | 11d | 10d |  |
| 10 | 1.1.5.1.2 | Site Data Information |  | 3d | 2013-09-04 | 2013-09-06 | 9 | 1d | 0d |  |
| 11 | 1.1.5.1.3 | Finalize system config (CIR) |  | 3d | 2013-09-09 | 2013-09-11 | 10 | 1d |  |  |
| 12 | 1.1.5.2 | HW Build up |  | 4w | 2013-08-15 | 2013-09-12 | 5 | 0d |  |  |
| 13 | 1.1.5.3 | SW Site Data available | milestone | 0d | 2013-09-12 | 2013-09-12 | 12 | 0d |  |  |
| 14 | 1.1.5.4 | SW Integration |  | 3w | 2013-09-13 | 2013-10-03 | 13, 11 | 0d |  |  |
| 15 | 1.1.6 | **Shipment** |  | 19d | 2013-09-27 | 2013-10-23 |  | 0d |  |  |
| 16 | 1.1.6.1 | HW readiness before shipment | milestone | 0d | 2013-10-03 | 2013-10-03 | 14 | 0d |  |  |
| 17 | 1.1.6.2 | LC submit and approval |  | 5d | 2013-09-27 | 2013-10-03 | 16FF | 0d |  |  |
| 18 | 1.1.6.3 | Shipping documents approval |  | 4d | 2013-10-04 | 2013-10-09 | 17 | 0d |  |  |
| 19 | 1.1.6.4 | Shipment date |  | 3d | 2013-10-10 | 2013-10-14 | 18 | 0d |  | start no later than 2013-10-10 |
| 20 | 1.1.6.5 | Customs clearance |  | 5d | 2013-10-15 | 2013-10-21 | 19 | 10d | 0d |  |
| 21 | 1.1.6.6 | System onsite - ready for MI |  | 2d | 2013-10-22 | 2013-10-23 | 20 | 10d | 0d |  |
| 22 | 1.1.7 | **Solution Specification** |  | 57d | 2013-09-09 | 2013-11-26 |  | 21d |  |  |
| 23 | 1.1.7.1 | **IPA planning - IPA prerequisites & system survey** |  | 15d | 2013-09-09 | 2013-09-27 |  | 10d |  |  |
| 24 | 1.1.7.1.1 | System survey and IPA pre-questionnaires |  | 5d | 2013-09-09 | 2013-09-13 | 10 | 41d | 0d |  |
| 25 | 1.1.7.1.2 | Collect postpaid packages and business processes |  | 10d | 2013-09-16 | 2013-09-27 | 24 | 41d | 0d |  |
| 26 | 1.1.7.1.3 | Survey summary and prepare for workshop (w/ ELCOM) |  | 10d | 2013-09-16 | 2013-09-27 | 24 | 41d | 0d |  |

| ID | WBS | Task | Type | Duration | Start | Finish | Predecessors | Total slack | Free slack | Constraint |
| --- | --- | --- | --- | --- | --- | --- | --- | --- | --- | --- |
| 27 | 1.1.7.2 | **IPA workshop (w/ VNP)** |  | 17d | 2013-09-30 | 2013-10-22 |  | 32d |  |  |
| 28 | 1.1.7.2.1 | IPA workshop preparation w/ ELCOM (final wrapup) |  | 2d | 2013-09-30 | 2013-10-01 | 26, 25 | 41d | 10d |  |
| 29 | 1.1.7.2.2 | IPA workshop w/ VNP |  | 5d | 2013-10-16 | 2013-10-22 | 28 | 32d | 0d | start no earlier than 2013-10-16 |
| 30 | 1.1.7.3 | Update detail solution for C1RT system |  | 2d | 2013-10-23 | 2013-10-24 | 29 | 32d | 11d |  |
| 31 | 1.1.7.4 | **IPA Documentation for Sign-Off** |  | 10d | 2013-11-11 | 2013-11-22 |  | 21d |  |  |
| 32 | 1.1.7.4.1 | Prepare & document detailed solution documents |  | 5d | 2013-11-11 | 2013-11-15 | 30 | 21d | 0d | finish no earlier than 2013-11-15 |
| 33 | 1.1.7.4.2 | Approve IPA documents (ELCOM-CMV) |  | 5d | 2013-11-18 | 2013-11-22 | 32 | 21d | 0d |  |
| 34 | 1.1.7.5 | Approve and Sign-Off IPA document (VNP) |  | 2d | 2013-11-25 | 2013-11-26 | 33 | 21d | 0d |  |
| 35 | 1.1.8 | **Product Development** |  | 80d | 2013-12-06 | 2014-04-14 |  | 0d |  |  |
| 36 | 1.1.8.1 | VNP C1-RT 3.5 - Currency Management (digit length) -- Type1 |  | 80d | 2013-12-06 | 2014-04-14 | 4 | 0d |  | finish no earlier than 2014-04-14 |
| 37 | 1.1.8.2 | VNP C1-RT 3.5 - Support Recharge Proxy |  | 80d | 2013-12-06 | 2014-04-14 | 4 | 0d |  | finish no earlier than 2014-04-14 |
| 38 | 1.1.8.3 | VNP C1-RT 3.5 - IVR languages (Vietnamese) -- Type1 |  | 80d | 2013-12-06 | 2014-04-14 | 4 | 0d |  | finish no earlier than 2014-04-14 |
| 39 | 1.1.9 | **ATP Document** |  | 25d | 2013-11-27 | 2013-12-31 |  | 67d |  |  |
| 40 | 1.1.9.1 | ATP preparation & submission |  | 10d | 2013-11-27 | 2013-12-10 | 34 | 67d | 0d |  |
| 41 | 1.1.9.2 | ATP review by ELCOM |  | 5d | 2013-12-11 | 2013-12-17 | 40 | 67d | 0d |  |
| 42 | 1.1.9.3 | ATP review by VNP |  | 5d | 2013-12-18 | 2013-12-24 | 41 | 67d | 0d |  |
| 43 | 1.1.9.4 | ATP Sign-Off |  | 5d | 2013-12-25 | 2013-12-31 | 42 | 67d |  |  |
| 44 | 1.1.10 | **Phase 0 - Onsite Integration** |  | 145d | 2013-11-01 | 2014-06-12 |  | 0d |  |  |
| 45 | 1.1.10.1 | Site Readiness | milestone | 0d | 2013-11-01 | 2013-11-01 | 21 | 34d | 0d | start no earlier than 2013-11-01 |
| 46 | 1.1.10.2 | Mechanical Installation |  | 4d | 2013-11-04 | 2013-11-07 | 45FS+1d | 34d | 0d |  |
| 47 | 1.1.10.3 | G3.5 - Readiness before on site Integration | milestone | 0d | 2013-11-07 | 2013-11-07 | 46 | 34d | 13d |  |
| 48 | 1.1.10.4 | Preparation, HW and SW checking/update |  | 21d | 2013-11-27 | 2013-12-25 | 47, 34, 36, 37, 38 | 21d | 0d |  |
| 49 | 1.1.10.5 | **Integration (Integration & Technical Test)** |  | 81d | 2013-12-26 | 2014-05-08 |  | 0d |  |  |
| 50 | 1.1.10.5.1 | Integration with IT Network |  | 5d | 2013-12-26 | 2014-01-02 | 48 | 21d | 0d |  |
| 51 | 1.1.10.5.2 | Integration with Telco NW |  | 5d | 2014-01-03 | 2014-01-09 | 50 | 21d | 0d |  |
| 52 | 1.1.10.5.3 | Integration with PCRF/PCEF | milestone | 0d | 2014-01-09 | 2014-01-09 | 51 | 21d | 0d |  |
| 53 | 1.1.10.5.4 | Integration with BSS |  | 5d | 2014-01-10 | 2014-01-16 | 52 | 21d | 0d |  |
| 54 | 1.1.10.5.5 | PCAT configuration |  | 30d | 2014-01-17 | 2014-03-13 | 53 | 21d |  |  |
| 55 | 1.1.10.5.6 | Testing - System Tests |  | 5d | 2014-04-15 | 2014-04-21 | 53, 54, 35 | 0d |  |  |
| 56 | 1.1.10.5.7 | Internal ATP |  | 2w | 2014-04-22 | 2014-05-08 | 55, 43 | 0d |  |  |

| ID | WBS | Task | Type | Duration | Start | Finish | Predecessors | Total slack | Free slack | Constraint |
| --- | --- | --- | --- | --- | --- | --- | --- | --- | --- | --- |
| 57 | 1.1.10.6 | **Ready for Acceptance (RFA)** |  | 20d | 2014-05-09 | 2014-06-05 |  | 0d |  |  |
| 58 | 1.1.10.6.1 | Customer ATP |  | 3w | 2014-05-09 | 2014-05-29 | 56 | 0d |  |  |
| 59 | 1.1.10.6.2 | Customer ATP Letter |  | 1w | 2014-05-30 | 2014-06-05 | 58 | 0d |  |  |
| 60 | 1.1.10.7 | Ready for Service (RFS) | milestone | 0d | 2014-06-05 | 2014-06-05 | 59 | 0d |  |  |
| 61 | 1.1.10.8 | **Rollout - Product Cut-over** |  | 5d | 2014-06-06 | 2014-06-12 |  | 0d |  |  |
| 62 | 1.1.10.8.1 | Subscriber migration |  | 1w | 2014-06-06 | 2014-06-12 | 60 | 0d |  |  |
| 63 | 1.1.11 | System stability |  | 4w | 2014-06-13 | 2014-07-10 | 62 | 0d |  |  |
| 64 | 1.1.12 | **Training** |  | 10d | 2014-02-18 | 2014-03-03 |  | 60d |  |  |
| 65 | 1.1.12.1 | C1-RT OAM |  | 5d | 2014-02-18 | 2014-02-24 | 56 | 60d | 0d | start no earlier than 2014-02-18 |
| 66 | 1.1.12.2 | C1-RT Configuration Essentials |  | 5d | 2014-02-25 | 2014-03-03 | 65 | 60d |  |  |
| 67 | 1.1.13 | Project Closure | milestone | 0d | 2014-07-10 | 2014-07-10 | 63, 65 | 0d |  |  |
